# 上邮汇平台-内部计划

How a schedule from MS Project changed from version to version. A marks actual dates.

## Version 1 (saved 2017-08-30, file 上邮汇商城后台开发计划.mpp)

| ID | WBS | Task | Duration | Start | Finish | Predecessors | Complete | Total float |
| --- | --- | --- | --- | --- | --- | --- | --- | --- |
| 1 | 1 | **编码开发** | 52d | 2017-08-21 08:00 A | 2017-11-06 17:00 |  | 16% | 0d |
| 2 | 1.1 | **玩家客户端** | 52d | 2017-08-21 08:00 A | 2017-11-06 17:00 |  | 15% | 0d |
| 3 | 1.1.1 | **身份验证** | 1.5d | 2017-08-21 08:00 A | 2017-08-22 12:00 A |  | 100% |  |
| 4 |  | 用户注册 | 0.5d | 2017-08-21 08:00 A | 2017-08-21 12:00 A |  | 100% |  |
| 5 |  | 用户登录 | 1d | 2017-08-21 13:00 A | 2017-08-22 12:00 A | 4 | 100% |  |
| 6 | 1.1.2 | **首页** | 6d | 2017-08-22 13:00 A | 2017-08-30 12:00 | 3 | 73% | 0d |
| 7 |  | 搜索 | 2d | 2017-08-25 13:00 A | 2017-08-29 12:00 A | 12 | 100% |  |
| 8 |  | 首页活动banner | 0d | 2017-08-22 13:00 A | 2017-08-22 17:00 A |  | 100% |  |
| 9 |  | 平台客服 | 1d | 2017-08-23 08:00 A | 2017-08-23 17:00 A | 8 | 100% |  |
| 10 |  | 快捷导航 | 0.5d | 2017-08-24 08:00 A | 2017-08-24 12:00 A | 9 | 100% |  |
| 11 |  | 热推商品 | 0.5d | 2017-08-24 13:00 A | 2017-08-24 17:00 A | 10 | 100% |  |
| 12 |  | 限时拍卖 | 0.5d | 2017-08-25 08:00 | 2017-08-25 12:00 | 11 |  | 3d |
| 13 |  | 商品（帖子）列表 | 1d | 2017-08-29 13:00 | 2017-08-30 12:00 | 7 |  | 0d |
| 14 | 1.1.3 | **私信消息** | 2d | 2017-08-30 13:00 A | 2017-09-01 12:00 | 6 | 50% | 42.5d |
| 15 |  | 私信列表 | 0.5d | 2017-08-30 13:00 A | 2017-08-30 17:00 A |  | 100% |  |
| 16 |  | 私信详情 | 0.5d | 2017-08-31 08:00 A | 2017-08-31 12:00 A | 15 | 100% |  |
| 17 |  | 发送/回复私信 | 1d | 2017-08-31 13:00 | 2017-09-01 12:00 | 16 |  | 42.5d |
| 18 | 1.1.4 | **资讯公告** | 1d | 2017-09-01 13:00 A | 2017-09-04 12:00 A | 14 | 100% |  |
| 19 |  | 公告列表 | 0.5d | 2017-09-01 13:00 A | 2017-09-01 17:00 A |  | 100% |  |
| 20 |  | 公告详情 | 0.5d | 2017-09-04 08:00 A | 2017-09-04 12:00 A | 19 | 100% |  |
| 21 | 1.1.5 | **商城** | 1.5d | 2017-09-04 13:00 | 2017-09-05 17:00 | 18 |  | 0d |
| 22 |  | 商城活动banner | 0.5d | 2017-09-04 13:00 | 2017-09-04 17:00 |  |  | 0d |
| 23 |  | 分类筛选 | 0.5d | 2017-09-05 08:00 | 2017-09-05 12:00 | 22 |  | 0d |
| 24 |  | 商品列表 | 0.5d | 2017-09-05 13:00 | 2017-09-05 17:00 | 23 |  | 0d |
| 25 | 1.1.6 | **商品详情** | 6d | 2017-09-06 08:00 | 2017-09-13 17:00 | 21 |  | 0d |
| 26 |  | 商品购买 | 1d | 2017-09-06 08:00 | 2017-09-06 17:00 |  |  | 0d |
| 27 |  | 加入购物车 | 0.5d | 2017-09-07 08:00 | 2017-09-07 12:00 | 26 |  | 0d |
| 28 |  | 拍卖出价 | 0.5d | 2017-09-07 13:00 | 2017-09-07 17:00 | 27 |  | 0d |
| 29 |  | 求购响应 | 2d | 2017-09-08 08:00 | 2017-09-11 17:00 | 28 |  | 0d |
| 30 |  | 店铺/用户中心 | 1d | 2017-09-12 08:00 | 2017-09-12 17:00 | 29 |  | 0d |
| 31 |  | 店铺/用户关注 | 0.5d | 2017-09-13 08:00 | 2017-09-13 12:00 | 30 |  | 0d |
| 32 |  | 商品收藏 | 0.5d | 2017-09-13 13:00 | 2017-09-13 17:00 | 31 |  | 0d |
| 33 | 1.1.7 | **购物车** | 3.5d | 2017-09-14 08:00 | 2017-09-19 12:00 | 25 |  | 0d |
| 34 |  | 购物车管理 | 1d | 2017-09-14 08:00 | 2017-09-14 17:00 |  |  | 0d |
| 35 |  | 下单结算 | 2d | 2017-09-15 08:00 | 2017-09-18 17:00 | 34 |  | 0d |
| 36 |  | 推荐商品 | 0.5d | 2017-09-19 08:00 | 2017-09-19 12:00 | 35 |  | 0d |
| 37 |  | 在线支付 | 5d | 2017-09-19 13:00 | 2017-09-26 12:00 | 33 |  | 0d |
| 38 | 1.1.9 | **发布** | 2d | 2017-09-26 13:00 | 2017-09-28 12:00 | 37 |  | 0d |
| 39 |  | 发布出售贴 | 0.5d | 2017-09-26 13:00 | 2017-09-26 17:00 |  |  | 0d |
| 40 |  | 发布求购帖 | 0.5d | 2017-09-27 08:00 | 2017-09-27 12:00 | 39 |  | 0d |
| 41 |  | 发布拍卖贴 | 1d | 2017-09-27 13:00 | 2017-09-28 12:00 | 40 |  | 0d |
| 42 | 1.1.10 | **求购抢单** | 1d | 2017-09-28 13:00 | 2017-09-29 12:00 | 38 |  | 0d |
| 43 |  | 求购信息推送 | 0.5d | 2017-09-28 13:00 | 2017-09-28 17:00 |  |  | 0d |
| 44 |  | 求购抢单 | 0.5d | 2017-09-29 08:00 | 2017-09-29 12:00 | 43 |  | 0d |
| 45 | 1.1.11 | **我的** | 7d | 2017-09-29 13:00 A | 2017-10-16 12:00 | 42 |  | 0d |
| 46 |  | 个人基本信息 | 2d | 2017-09-29 13:00 | 2017-10-09 12:00 |  |  | 0d |
| 47 |  | 优惠劵 | 1d | 2017-10-09 13:00 | 2017-10-10 12:00 | 46 |  | 0d |
| 48 |  | 关注店铺 | 0.5d | 2017-10-10 13:00 | 2017-10-10 17:00 | 47 |  | 0d |
| 49 |  | 商品收藏 | 0.5d | 2017-10-11 08:00 | 2017-10-11 12:00 | 48 |  | 0d |
| 50 |  | 草稿箱 | 1d | 2017-10-11 13:00 | 2017-10-12 12:00 | 49 |  | 0d |
| 51 |  | 地址管理 | 1d | 2017-10-12 13:00 | 2017-10-13 12:00 | 50 |  | 0d |
| 52 |  | 个人设置 | 1d | 2017-10-13 13:00 | 2017-10-16 12:00 | 51 |  | 0d |
| 53 |  | 退出登录 | 0d | 2017-10-09 13:00 A | 2017-10-09 13:00 A | 52 | 100% |  |
| 54 | 1.1.12 | **用户认证** | 2d | 2017-10-16 13:00 | 2017-10-18 12:00 | 45 |  | 0d |
| 55 |  | 个人认证 | 1d | 2017-10-16 13:00 | 2017-10-17 12:00 |  |  | 0d |
| 56 |  | 商家认证 | 1d | 2017-10-17 13:00 | 2017-10-18 12:00 | 55 |  | 0d |
| 57 | 1.1.13 | **我的钱包** | 4.5d | 2017-10-18 13:00 | 2017-10-24 17:00 | 54 |  | 0d |
| 58 |  | 充值 | 0.5d | 2017-10-18 13:00 | 2017-10-18 17:00 |  |  | 0d |
| 59 |  | 提现 | 2d | 2017-10-19 08:00 | 2017-10-20 17:00 | 58 |  | 0d |
| 60 |  | 支付绑定 | 1d | 2017-10-23 08:00 | 2017-10-23 17:00 | 59 |  | 0d |
| 61 |  | 账户流水 | 1d | 2017-10-24 08:00 | 2017-10-24 17:00 | 60 |  | 0d |
| 62 | 1.1.14 | **订单管理** | 4.5d | 2017-10-25 08:00 | 2017-10-31 12:00 | 57 |  | 0d |
| 63 |  | 订单列表 | 2d | 2017-10-25 08:00 | 2017-10-26 17:00 |  |  | 0d |
| 64 |  | 订单发货 | 0.5d | 2017-10-27 08:00 | 2017-10-27 12:00 | 63 |  | 0d |
| 65 |  | 确认收货 | 0.5d | 2017-10-27 13:00 | 2017-10-27 17:00 | 64 |  | 0d |
| 66 |  | 订单评价 | 1d | 2017-10-30 08:00 | 2017-10-30 17:00 | 65 |  | 0d |
| 67 |  | 退款申请 | 0.5d | 2017-10-31 08:00 | 2017-10-31 12:00 | 66 |  | 0d |
| 68 | 1.1.15 | **服务中心** | 4.5d | 2017-10-31 13:00 | 2017-11-06 17:00 | 62 |  | 0d |
| 69 |  | 服务介绍 | 1d | 2017-10-31 13:00 | 2017-11-01 12:00 |  |  | 0d |
| 70 |  | 服务预约 | 3d | 2017-11-01 13:00 | 2017-11-06 12:00 | 69 |  | 0d |

| ID | WBS | Task | Duration | Start | Finish | Predecessors | Complete | Total float |
| --- | --- | --- | --- | --- | --- | --- | --- | --- |
| 71 |  | 鉴评码查询 | 0.5d | 2017-11-06 13:00 | 2017-11-06 17:00 | 70 |  | 0d |
| 72 | 1.2 | **平台管理端** | 50d | 2017-08-21 08:00 A | 2017-11-02 17:00 |  | 25% | 2d |
| 73 |  | 管理员登录 | 0d | 2017-08-21 08:00 A | 2017-08-21 08:00 A |  | 100% |  |
| 74 |  | 首页 | 1d | 2017-08-21 08:00 | 2017-08-21 17:00 | 73 |  | 51d |
| 75 | 1.2.3 | **商品管理** | 4d | 2017-08-22 08:00 A | 2017-08-25 17:00 A | 74 | 100% |  |
| 76 |  | 商品列表 | 1d | 2017-08-22 08:00 A | 2017-08-22 17:00 A |  | 100% |  |
| 77 |  | 商品审核 | 0.5d | 2017-08-23 08:00 A | 2017-08-23 12:00 A | 76 | 100% |  |
| 78 |  | 商品下架 | 0.5d | 2017-08-23 13:00 A | 2017-08-23 17:00 A | 77 | 100% |  |
| 79 |  | 商品分类 | 2d | 2017-08-24 08:00 A | 2017-08-25 17:00 A | 78 | 100% |  |
| 80 | 1.2.4 | **店铺管理** | 3.5d | 2017-08-28 08:00 | 2017-08-31 12:00 | 75 |  | 38d |
| 81 |  | 店铺列表 | 1d | 2017-08-28 08:00 | 2017-08-28 17:00 |  |  | 38d |
| 82 |  | 店铺查看/编辑 | 0.5d | 2017-08-29 08:00 | 2017-08-29 12:00 | 81 |  | 38d |
| 83 |  | 店铺冻结 | 0.5d | 2017-08-29 13:00 | 2017-08-29 17:00 | 82 |  | 38d |
| 84 |  | 店铺审核 | 0.5d | 2017-08-30 08:00 | 2017-08-30 12:00 | 83 |  | 38d |
| 85 |  | 增值服务管理 | 0.5d | 2017-08-30 13:00 | 2017-08-30 17:00 | 84 |  | 38d |
| 86 |  | 营销中心 | 0.5d | 2017-08-31 08:00 | 2017-08-31 12:00 | 85 |  | 38d |
| 87 | 1.2.5 | **交易管理** | 4.5d | 2017-08-31 13:00 | 2017-09-06 17:00 | 80 |  | 38d |
| 88 |  | 订单管理 | 2d | 2017-08-31 13:00 | 2017-09-04 12:00 |  |  | 38d |
| 89 |  | 仲裁管理 | 1d | 2017-09-04 13:00 | 2017-09-05 12:00 | 88 |  | 38d |
| 90 |  | 支付方式 | 0.5d | 2017-09-05 13:00 | 2017-09-05 17:00 | 89 |  | 38d |
| 91 |  | 交易设置 | 1d | 2017-09-06 08:00 | 2017-09-06 17:00 | 90 |  | 38d |
| 92 |  | 客服管理 | 1d | 2017-09-07 08:00 | 2017-09-07 17:00 | 87 |  | 38d |
| 93 | 1.2.7 | **会员管理** | 4d | 2017-09-08 08:00 A | 2017-09-13 17:00 A | 92 | 100% |  |
| 94 |  | 会员列表 | 1d | 2017-09-08 08:00 A | 2017-09-08 17:00 A |  | 100% |  |
| 95 |  | 会员拉黑 | 0.5d | 2017-09-11 08:00 A | 2017-09-11 12:00 A | 94 | 100% |  |
| 96 |  | 会员标签 | 1d | 2017-09-11 13:00 A | 2017-09-12 12:00 A | 95 | 100% |  |
| 97 |  | 积分规则 | 0.5d | 2017-09-12 13:00 A | 2017-09-12 17:00 A | 96 | 100% |  |
| 98 |  | 会员积分 | 1d | 2017-09-13 08:00 A | 2017-09-13 17:00 A | 97 | 100% |  |
| 99 | 1.2.8 | **分销模板管理** | 1.5d | 2017-09-14 08:00 A | 2017-09-15 12:00 A | 93 | 100% |  |
| 100 |  | 商品分销模板管理 | 0.5d | 2017-09-14 08:00 A | 2017-09-14 12:00 A |  | 100% |  |
| 101 |  | 会员分销模板管理 | 1d | 2017-09-14 13:00 A | 2017-09-15 12:00 A | 100 | 100% |  |
| 102 | 1.2.9 | **分销管理** | 5d | 2017-09-15 13:00 | 2017-09-22 12:00 | 99 |  | 0d |
| 103 |  | 分销会员管理 | 1d | 2017-09-15 13:00 | 2017-09-18 12:00 |  |  | -1.5d |
| 104 |  | 商品分销统计 | 2d | 2017-09-18 13:00 | 2017-09-20 12:00 | 103 |  | -1.5d |
| 105 |  | 会员分销统计 | 2d | 2017-09-20 13:00 | 2017-09-22 12:00 | 104 |  | -1.5d |
| 106 | 1.2.10 | **服务管理** | 3.5d | 2017-09-22 13:00 A | 2017-09-27 17:00 A | 102 | 100% |  |
| 107 |  | 服务介绍 | 1d | 2017-09-22 13:00 A | 2017-09-25 12:00 A |  | 100% |  |
| 108 |  | 服务预约 | 1d | 2017-09-25 13:00 A | 2017-09-26 12:00 A | 107 | 100% |  |
| 109 |  | 鉴评结果 | 1d | 2017-09-26 13:00 A | 2017-09-27 12:00 A | 108 | 100% |  |
| 110 |  | 鉴评标签 | 0.5d | 2017-09-27 13:00 A | 2017-09-27 17:00 A | 109 | 100% |  |
| 111 |  | 统计报表 | 5d | 2017-09-28 08:00 | 2017-10-10 17:00 | 106 |  | -1.5d |
| 112 | 1.2.12 | **系统管理** | 4.5d | 2017-10-09 13:00 A | 2017-10-13 17:00 | 111 |  | 2d |
| 113 |  | 首页设置 | 2d | 2017-10-11 08:00 | 2017-10-12 17:00 |  |  | 2d |
| 114 |  | 资讯公告管理 | 1d | 2017-10-13 08:00 | 2017-10-13 17:00 | 113 |  | 2d |
| 115 |  | 角色权限管理 | 0d | 2017-10-09 13:00 A | 2017-10-09 13:00 A | 114 | 100% |  |
| 116 |  | 管理员管理 | 0d | 2017-10-10 13:00 A | 2017-10-10 13:00 A | 115 | 100% |  |
| 117 |  | 系统设置 | 1d | 2017-10-11 08:00 | 2017-10-11 17:00 | 116 |  | 4d |
| 118 | 1.2.13 | **财务管理** | 14d | 2017-10-16 08:00 | 2017-11-02 17:00 | 112 |  | 2d |
| 119 |  | 财务概览 | 2d | 2017-10-16 08:00 | 2017-10-17 17:00 |  |  | 2d |
| 120 |  | 明细流水 | 1d | 2017-10-18 08:00 | 2017-10-18 17:00 | 119 |  | 2d |
| 121 |  | 财务对账 | 2d | 2017-10-19 08:00 | 2017-10-20 17:00 | 120 |  | 2d |
| 122 |  | 店铺保证金 | 1d | 2017-10-23 08:00 | 2017-10-23 17:00 | 121 |  | 2d |
| 123 |  | 提现管理 | 3d | 2017-10-24 08:00 | 2017-10-26 17:00 | 122 |  | 2d |
| 124 |  | 账户余额 | 2d | 2017-10-27 08:00 | 2017-10-30 17:00 | 123 |  | 2d |
| 125 |  | 分销结算 | 3d | 2017-10-31 08:00 | 2017-11-02 17:00 | 124 |  | 2d |
| 126 | 1.3 | **商家管理端** | 5.5d | 2017-08-21 08:00 | 2017-08-28 12:00 |  |  | 46.5d |
| 127 |  | 登录 | 0.5d | 2017-08-21 08:00 | 2017-08-21 12:00 |  |  | 52d |
| 128 |  | 首页 | 1d | 2017-08-21 08:00 | 2017-08-21 17:00 |  |  | 51.5d |
| 129 | 1.3.3 | **商品管理** | 2d | 2017-08-21 08:00 | 2017-08-22 17:00 |  |  | 50d |
| 130 |  | 商品列表 | 0.5d | 2017-08-21 08:00 | 2017-08-21 12:00 |  |  | 50.5d |
| 131 |  | 商品发布 | 1d | 2017-08-21 13:00 | 2017-08-22 12:00 | 130 |  | 50.5d |
| 132 |  | 商品下架 | 0.5d | 2017-08-22 13:00 | 2017-08-22 17:00 | 131 |  | 50.5d |
| 133 | 1.3.4 | **交易管理** | 4d | 2017-08-21 08:00 | 2017-08-24 17:00 |  |  | 48d |
| 134 |  | 订单管理 | 2d | 2017-08-21 08:00 | 2017-08-22 17:00 |  |  | 48.5d |
| 135 |  | 退货处理 | 0.5d | 2017-08-23 08:00 | 2017-08-23 12:00 | 134 |  | 48.5d |
| 136 |  | 退款处理 | 0.5d | 2017-08-23 13:00 | 2017-08-23 17:00 | 135 |  | 48.5d |
| 137 |  | 运费模板管理 | 1d | 2017-08-24 08:00 | 2017-08-24 17:00 | 136 |  | 48.5d |
| 138 | 1.3.5 | **营销活动管理** | 5.5d | 2017-08-21 08:00 | 2017-08-28 12:00 |  |  | 46.5d |
| 139 |  | 优惠劵管理 | 1d | 2017-08-21 08:00 | 2017-08-21 17:00 |  |  | 47d |
| 140 |  | 满减/满送 | 0.5d | 2017-08-22 08:00 | 2017-08-22 12:00 | 139 |  | 47d |

| ID | WBS | Task | Duration | Start | Finish | Predecessors | Total float |
| --- | --- | --- | --- | --- | --- | --- | --- |
| 141 |  | 限时折扣 | 1d | 2017-08-22 13:00 | 2017-08-23 12:00 | 140 | 47d |
| 142 |  | 套餐搭配 | 1d | 2017-08-23 13:00 | 2017-08-24 12:00 | 141 | 47d |
| 143 |  | 团购 | 2d | 2017-08-24 13:00 | 2017-08-28 12:00 | 142 | 47d |
| 144 | 1.3.6 | **店铺管理** | 4.5d | 2017-08-21 08:00 | 2017-08-25 12:00 |  | 47.5d |
| 145 |  | 页面设置 | 1d | 2017-08-21 08:00 | 2017-08-21 17:00 |  | 48d |
| 146 |  | 客服管理 | 0.5d | 2017-08-22 08:00 | 2017-08-22 12:00 | 145 | 48d |
| 147 |  | 增值服务管理 | 0.5d | 2017-08-22 13:00 | 2017-08-22 17:00 | 146 | 48d |
| 148 |  | 财务管理 | 2d | 2017-08-23 08:00 | 2017-08-24 17:00 | 147 | 48d |
| 149 |  | 保证金管理 | 0.5d | 2017-08-25 08:00 | 2017-08-25 12:00 | 148 | 48d |
| 150 |  | 私信管理 | 1d | 2017-08-21 08:00 | 2017-08-21 17:00 |  | 51.5d |
| 151 | 1.3.8 | **分销管理** | 3d | 2017-08-21 08:00 | 2017-08-23 17:00 |  | 49d |
| 152 |  | 下级会员列表 | 1d | 2017-08-21 08:00 | 2017-08-21 17:00 |  | 49.5d |
| 153 |  | 会员分销统计 | 2d | 2017-08-22 08:00 | 2017-08-23 17:00 | 152 | 49.5d |
| 154 |  | 统计报表 | 3d | 2017-08-21 08:00 | 2017-08-23 17:00 |  | 49.5d |
| 155 |  | 集成测试 | 5d | 2017-11-07 08:00 | 2017-11-13 17:00 | 1 | 0d |

## Version 2 (saved 2017-11-01, file 上邮汇平台-阶段计划.mpp)

Last finish 2017-11-13 → 2017-11-30 (+17d). Complete tasks 30 → 74.

Added:

| ID | Task | Duration | Start | Finish | Predecessors |
| --- | --- | --- | --- | --- | --- |
| 1 | **第一阶段** | 38d | 2017-08-21 08:00 A | 2017-10-17 17:00 |  |
| 121 | UAT测试 | 5d | 2017-10-10 08:00 | 2017-10-16 17:00 | 120 |
| 122 | 第一阶段上线 | 1d | 2017-10-17 08:00 | 2017-10-17 17:00 | 121 |
| 123 | **第二阶段** | 32d | 2017-10-18 08:00 | 2017-11-30 17:00 | 122 |
| 124 | **编码开发** | 21d | 2017-10-18 08:00 | 2017-11-15 17:00 |  |
| 125 | **玩家客户端** | 6.5d | 2017-10-18 08:00 | 2017-10-26 12:00 |  |
| 126 | **首页** | 1d | 2017-10-18 08:00 | 2017-10-18 17:00 |  |
| 135 | **平台管理端** | 21d | 2017-10-18 08:00 | 2017-11-15 17:00 |  |
| 150 | **财务管理** | 5d | 2017-11-09 08:00 | 2017-11-15 17:00 | 149 |
| 153 | **商家管理端** | 12.5d | 2017-10-18 08:00 | 2017-11-03 12:00 |  |
| 160 | **店铺管理** | 1d | 2017-10-25 13:00 | 2017-10-26 12:00 | 154 |
| 167 | 集成测试 | 5d | 2017-11-16 08:00 | 2017-11-22 17:00 | 124 |
| 168 | UAT测试 | 5d | 2017-11-23 08:00 | 2017-11-29 17:00 | 167 |
| 169 | 第二阶段上线 | 1d | 2017-11-30 08:00 | 2017-11-30 17:00 | 168 |

Changed:

| ID | Task | Start | Finish | Duration | Complete | Total float | Predecessors | Other |
| --- | --- | --- | --- | --- | --- | --- | --- | --- |
| 2 | **编码开发** |  | 2017-11-06 17:00 → 2017-09-28 12:00 (-39d) | 52d → 28.5d | 16% → 76% | 0d → 41.5d |  |  |
| 3 | **玩家客户端** |  | 2017-11-06 17:00 → 2017-09-28 12:00 (-39d) | 52d → 28.5d | 15% → 94% | 0d → 41.5d |  |  |
| 7 | **首页** |  | 2017-08-30 12:00 → 2017-08-29 12:00 A (-1d) | 6d → 5d | 73% → 100% | 0d → none |  |  |
| 8 | 搜索 | 2017-08-25 13:00 A → 2017-08-24 13:00 A (-1d) | 2017-08-29 12:00 A → 2017-08-28 12:00 A (-1d) |  |  |  |  |  |
| 10 | 快捷导航 | 2017-08-24 08:00 A → 2017-08-23 08:00 A (-1d) | 2017-08-24 12:00 A → 2017-08-23 12:00 A (-1d) |  |  |  | 127 → 9 |  |
| 11 | 热推商品 | 2017-08-24 13:00 A → 2017-08-23 13:00 A (-1d) | 2017-08-24 17:00 A → 2017-08-23 17:00 A (-1d) |  |  |  |  |  |
| 12 | 限时拍卖 | 2017-08-25 08:00 → 2017-08-24 08:00 A (-1d) | 2017-08-25 12:00 → 2017-08-24 12:00 A (-1d) |  | 0% → 100% | 3d → none |  | resources 穆龙飞 → 丁猛 |
| 13 | 商品（帖子）列表 | 2017-08-29 13:00 → 2017-08-28 13:00 A (-1d) | 2017-08-30 12:00 → 2017-08-29 12:00 A (-1d) |  | 0% → 100% | 0d → none |  | resources 穆龙飞 → 丁猛 |
| 14 | **私信消息** | 2017-08-30 13:00 A → 2017-08-29 13:00 A (-1d) | 2017-09-01 12:00 → 2017-08-31 12:00 A (-1d) |  | 50% → 100% | 42.5d → none |  |  |
| 17 | 发送/回复私信 | 2017-08-31 13:00 → 2017-08-29 13:00 A (-2d) | 2017-09-01 12:00 → 2017-08-30 12:00 A (-2d) |  | 0% → 100% | 42.5d → none | 16 → none |  |
| 18 | **资讯公告** | 2017-09-01 13:00 A → 2017-08-31 13:00 A (-1d) | 2017-09-04 12:00 A → 2017-09-01 12:00 A (-3d) |  |  |  | 14 → 16 |  |
| 19 | 公告列表 | 2017-09-01 13:00 A → 2017-08-31 13:00 A (-1d) | 2017-09-01 17:00 A → 2017-08-31 17:00 A (-1d) |  |  |  |  |  |
| 20 | 公告详情 | 2017-09-04 08:00 A → 2017-09-01 08:00 A (-3d) | 2017-09-04 12:00 A → 2017-09-01 12:00 A (-3d) |  |  |  |  |  |
| 21 | **商城** | 2017-09-04 13:00 → 2017-08-30 13:00 A (-5d) | 2017-09-05 17:00 → 2017-09-04 12:00 A (-1d) | 1.5d → 3d | 0% → 100% | 0d → none | 18 → 17 |  |
| 22 | 商城活动banner | 2017-09-04 13:00 → 2017-08-30 13:00 A (-5d) | 2017-09-04 17:00 → 2017-08-30 17:00 A (-5d) |  | 0% → 100% | 0d → none |  |  |
| 23 | 分类筛选 | 2017-09-05 08:00 → 2017-09-01 13:00 A (-4d) | 2017-09-05 12:00 → 2017-09-01 17:00 A (-4d) |  | 0% → 100% | 0d → none | 22 → 20 | resources 穆龙飞 → 丁猛 |
| 24 | 商品列表 | 2017-09-05 13:00 → 2017-09-04 08:00 A (-1d) | 2017-09-05 17:00 → 2017-09-04 12:00 A (-1d) |  | 0% → 100% | 0d → none |  | resources 穆龙飞 → 丁猛 |
| 25 | **商品详情** | 2017-09-06 08:00 → 2017-08-31 08:00 A (-6d) | 2017-09-13 17:00 → 2017-09-07 17:00 (-6d) |  | 0% → 67% | 0d → 56d | 21 → none |  |
| 26 | 商品购买 | 2017-09-06 08:00 → 2017-08-31 08:00 A (-6d) | 2017-09-06 17:00 → 2017-08-31 17:00 A (-6d) |  | 0% → 100% | 0d → none | none → 22 | resources 丁猛 → 穆龙飞 |
| 27 | 加入购物车 | 2017-09-07 08:00 → 2017-09-01 08:00 A (-6d) | 2017-09-07 12:00 → 2017-09-01 12:00 A (-6d) |  | 0% → 100% | 0d → none |  | resources 丁猛 → 穆龙飞 |
| 28 | 拍卖出价 | 2017-09-07 13:00 → 2017-09-01 13:00 A (-6d) | 2017-09-07 17:00 → 2017-09-01 17:00 A (-6d) |  | 0% → 100% | 0d → none |  |  |
| 29 | 求购响应 | 2017-09-08 08:00 → 2017-09-04 08:00 (-4d) | 2017-09-11 17:00 → 2017-09-05 17:00 (-6d) |  |  | 0d → 58d |  |  |
| 30 | 店铺/用户中心 | 2017-09-12 08:00 → 2017-09-06 08:00 A (-6d) | 2017-09-12 17:00 → 2017-09-06 17:00 A (-6d) |  | 0% → 100% | 0d → none |  |  |
| 31 | 店铺/用户关注 | 2017-09-13 08:00 → 2017-09-07 08:00 A (-6d) | 2017-09-13 12:00 → 2017-09-07 12:00 A (-6d) |  | 0% → 100% | 0d → none |  |  |
| 32 | 商品收藏 | 2017-09-13 13:00 → 2017-09-07 13:00 A (-6d) | 2017-09-13 17:00 → 2017-09-07 17:00 A (-6d) |  | 0% → 100% | 0d → none |  |  |
| 33 | **购物车** | 2017-09-14 08:00 → 2017-09-04 13:00 A (-10d) | 2017-09-19 12:00 → 2017-09-08 17:00 A (-11d) | 3.5d → 4.5d | 0% → 100% | 0d → none | 25 → 27 |  |
| 34 | 购物车管理 | 2017-09-14 08:00 → 2017-09-08 08:00 A (-6d) | 2017-09-14 17:00 → 2017-09-08 17:00 A (-6d) |  | 0% → 100% | 0d → none | none → 25 | resources 丁猛 → 穆龙飞 |
| 35 | 下单结算 | 2017-09-15 08:00 → 2017-09-04 13:00 A (-11d) | 2017-09-18 17:00 → 2017-09-06 12:00 A (-12d) |  | 0% → 100% | 0d → none | 34 → 24 |  |
| 36 | 推荐商品 | 2017-09-19 08:00 → 2017-09-06 13:00 A (-13d) | 2017-09-19 12:00 → 2017-09-06 17:00 A (-13d) |  | 0% → 100% | 0d → none |  |  |
| 37 | 在线支付 | 2017-09-19 13:00 → 2017-09-07 08:00 A (-12d) | 2017-09-26 12:00 → 2017-09-13 17:00 A (-13d) |  | 0% → 100% | 0d → none | 33 → 36 |  |
| 38 | **发布** | 2017-09-26 13:00 → 2017-09-11 08:00 A (-15d) | 2017-09-28 12:00 → 2017-09-12 17:00 A (-16d) |  | 0% → 100% | 0d → none | 37 → 32 |  |
| 39 | 发布出售贴 | 2017-09-26 13:00 → 2017-09-11 08:00 A (-15d) | 2017-09-26 17:00 → 2017-09-11 12:00 A (-15d) |  | 0% → 100% | 0d → none | none → 34 |  |
| 40 | 发布求购帖 | 2017-09-27 08:00 → 2017-09-11 13:00 A (-16d) | 2017-09-27 12:00 → 2017-09-11 17:00 A (-16d) |  | 0% → 100% | 0d → none |  |  |
| 41 | 发布拍卖贴 | 2017-09-27 13:00 → 2017-09-12 08:00 A (-15d) | 2017-09-28 12:00 → 2017-09-12 17:00 A (-16d) |  | 0% → 100% | 0d → none |  |  |
| 42 | **我的** | 2017-09-29 13:00 A → 2017-09-13 08:00 A (-16d) | 2017-10-16 12:00 → 2017-09-20 12:00 A (-26d) | 7d → 5.5d | 0% → 100% | 0d → none | 128 → 38 |  |
| 43 | 关注店铺 | 2017-10-10 13:00 → 2017-09-13 08:00 A (-27d) | 2017-10-10 17:00 → 2017-09-13 12:00 A (-27d) |  | 0% → 100% | 0d → none | 47 → 41 |  |
| 44 | 商品收藏 | 2017-10-11 08:00 → 2017-09-13 13:00 A (-28d) | 2017-10-11 12:00 → 2017-09-13 17:00 A (-28d) |  | 0% → 100% | 0d → none |  |  |
| 45 | 草稿箱 | 2017-10-11 13:00 → 2017-09-14 08:00 A (-27d) | 2017-10-12 12:00 → 2017-09-14 17:00 A (-28d) |  | 0% → 100% | 0d → none |  |  |
| 46 | 个人基本信息 | 2017-09-29 13:00 → 2017-09-14 08:00 A (-15d) | 2017-10-09 12:00 → 2017-09-15 17:00 A (-24d) |  | 0% → 100% | 0d → none | none → 37 | resources 穆龙飞 → 丁猛 |
| 47 | 优惠劵 | 2017-10-09 13:00 → 2017-09-18 08:00 A (-21d) | 2017-10-10 12:00 → 2017-09-18 17:00 A (-22d) |  | 0% → 100% | 0d → none |  |  |
| 48 | 地址管理 | 2017-10-12 13:00 → 2017-09-19 08:00 A (-23d) | 2017-10-13 12:00 → 2017-09-19 17:00 A (-24d) |  | 0% → 100% | 0d → none | 45 → 47 |  |
| 49 | 个人设置 | 2017-10-13 13:00 → 2017-09-15 08:00 A (-28d) | 2017-10-16 12:00 → 2017-09-15 17:00 A (-31d) |  | 0% → 100% | 0d → none | 48 → 45 | resources 丁猛 → 穆龙飞 |
| 50 | 退出登录 | 2017-10-09 13:00 A → 2017-09-20 12:00 A (-19d) | 2017-10-09 13:00 A → 2017-09-20 12:00 A (-19d) |  |  |  |  | resources 丁猛 → 穆龙飞 |
| 51 | **用户认证** | 2017-10-16 13:00 → 2017-09-20 08:00 A (-26d) | 2017-10-18 12:00 → 2017-09-21 17:00 A (-27d) |  | 0% → 100% | 0d → none | 42 → 37 |  |
| 52 | 个人认证 | 2017-10-16 13:00 → 2017-09-20 08:00 A (-26d) | 2017-10-17 12:00 → 2017-09-20 17:00 A (-27d) |  | 0% → 100% | 0d → none | none → 48 |  |
| 53 | 商家认证 | 2017-10-17 13:00 → 2017-09-21 08:00 A (-26d) | 2017-10-18 12:00 → 2017-09-21 17:00 A (-27d) |  | 0% → 100% | 0d → none |  |  |
| 54 | **我的钱包** | 2017-10-18 13:00 → 2017-09-22 08:00 A (-26d) | 2017-10-24 17:00 → 2017-09-28 12:00 A (-26d) |  | 0% → 100% | 0d → none |  |  |
| 55 | 充值 | 2017-10-18 13:00 → 2017-09-22 08:00 A (-26d) | 2017-10-18 17:00 → 2017-09-22 12:00 A (-26d) |  | 0% → 100% | 0d → none |  |  |
| 56 | 提现 | 2017-10-19 08:00 → 2017-09-22 13:00 A (-27d) | 2017-10-20 17:00 → 2017-09-26 12:00 A (-24d) |  | 0% → 100% | 0d → none |  |  |
| 57 | 支付绑定 | 2017-10-23 08:00 → 2017-09-26 13:00 A (-27d) | 2017-10-23 17:00 → 2017-09-27 12:00 A (-26d) |  | 0% → 100% | 0d → none |  |  |
| 58 | 账户流水 | 2017-10-24 08:00 → 2017-09-27 13:00 A (-27d) | 2017-10-24 17:00 → 2017-09-28 12:00 A (-26d) |  | 0% → 100% | 0d → none |  |  |
| 59 | **订单管理** | 2017-10-25 08:00 → 2017-09-20 13:00 A (-35d) | 2017-10-31 12:00 → 2017-09-26 17:00 (-35d) |  | 0% → 89% | 0d → 43d | 54 → 42 |  |
| 60 | 订单列表 | 2017-10-25 08:00 → 2017-09-20 13:00 A (-35d) | 2017-10-26 17:00 → 2017-09-22 12:00 A (-34d) |  | 0% → 100% | 0d → none | none → 49 |  |
| 61 | 订单发货 | 2017-10-27 08:00 → 2017-09-22 13:00 A (-35d) | 2017-10-27 12:00 → 2017-09-22 17:00 A (-35d) |  | 0% → 100% | 0d → none |  |  |
| 62 | 确认收货 | 2017-10-27 13:00 → 2017-09-25 08:00 A (-32d) | 2017-10-27 17:00 → 2017-09-25 12:00 A (-32d) |  | 0% → 100% | 0d → none |  |  |
| 63 | 订单评价 | 2017-10-30 08:00 → 2017-09-25 13:00 A (-35d) | 2017-10-30 17:00 → 2017-09-26 12:00 A (-34d) |  | 0% → 100% | 0d → none |  |  |
| 64 | 退款申请 | 2017-10-31 08:00 → 2017-09-26 13:00 (-35d) | 2017-10-31 12:00 → 2017-09-26 17:00 (-35d) |  |  | 0d → 43d |  |  |
| 65 | **平台管理端** |  | 2017-11-02 17:00 → 2017-09-14 12:00 (-49d) | 50d → 18.5d | 25% → 77% | 2d → 51.5d |  |  |
| 67 | 首页 | 2017-08-21 08:00 A | 2017-08-21 17:00 A |  | 0% → 100% | 51d → none | 66 → none |  |
| 68 | **商品管理** | 2017-08-22 08:00 A → 2017-08-21 08:00 A (-1d) | 2017-08-25 17:00 A → 2017-08-24 17:00 A (-1d) |  |  |  | 67 → 66 |  |
| 69 | 商品列表 | 2017-08-22 08:00 A → 2017-08-21 08:00 A (-1d) | 2017-08-22 17:00 A → 2017-08-21 17:00 A (-1d) |  |  |  |  |  |
| 70 | 商品审核 | 2017-08-23 08:00 A → 2017-08-22 08:00 A (-1d) | 2017-08-23 12:00 A → 2017-08-22 12:00 A (-1d) |  |  |  |  |  |
| 71 | 商品下架 | 2017-08-23 13:00 A → 2017-08-22 13:00 A (-1d) | 2017-08-23 17:00 A → 2017-08-22 17:00 A (-1d) |  |  |  |  |  |
| 72 | 商品分类 | 2017-08-24 08:00 A → 2017-08-23 08:00 A (-1d) | 2017-08-25 17:00 A → 2017-08-24 17:00 A (-1d) |  |  |  |  |  |
| 73 | **店铺管理** | 2017-08-28 08:00 → 2017-08-22 08:00 A (-6d) | 2017-08-31 12:00 → 2017-08-25 12:00 A (-6d) |  | 0% → 100% | 38d → none | 68 → 67 |  |
| 74 | 店铺列表 | 2017-08-28 08:00 → 2017-08-22 08:00 A (-6d) | 2017-08-28 17:00 → 2017-08-22 17:00 A (-6d) |  | 0% → 100% | 38d → none |  |  |
| 75 | 店铺查看/编辑 | 2017-08-29 08:00 → 2017-08-23 08:00 A (-6d) | 2017-08-29 12:00 → 2017-08-23 12:00 A (-6d) |  | 0% → 100% | 38d → none |  |  |
| 76 | 店铺冻结 | 2017-08-29 13:00 → 2017-08-23 13:00 A (-6d) | 2017-08-29 17:00 → 2017-08-23 17:00 A (-6d) |  | 0% → 100% | 38d → none |  |  |
| 77 | 店铺审核 | 2017-08-30 08:00 → 2017-08-24 08:00 A (-6d) | 2017-08-30 12:00 → 2017-08-24 12:00 A (-6d) |  | 0% → 100% | 38d → none |  |  |
| 78 | 增值服务管理 | 2017-08-30 13:00 → 2017-08-24 13:00 A (-6d) | 2017-08-30 17:00 → 2017-08-24 17:00 A (-6d) |  | 0% → 100% | 38d → none |  |  |

| ID | Task | Start | Finish | Duration | Complete | Total float | Predecessors | Other |
| --- | --- | --- | --- | --- | --- | --- | --- | --- |
| 79 | 营销中心 | 2017-08-31 08:00 → 2017-08-25 08:00 A (-6d) | 2017-08-31 12:00 → 2017-08-25 12:00 A (-6d) |  | 0% → 100% | 38d → none |  |  |
| 80 | **交易管理** | 2017-08-31 13:00 → 2017-08-25 08:00 A (-6d) | 2017-09-06 17:00 → 2017-08-31 12:00 A (-6d) |  | 0% → 100% | 38d → none | 73 → 68 |  |
| 81 | 订单管理 | 2017-08-31 13:00 → 2017-08-25 08:00 A (-6d) | 2017-09-04 12:00 → 2017-08-28 17:00 A (-7d) |  | 0% → 100% | 38d → none |  |  |
| 82 | 仲裁管理 | 2017-09-04 13:00 → 2017-08-29 08:00 A (-6d) | 2017-09-05 12:00 → 2017-08-29 17:00 A (-7d) |  | 0% → 100% | 38d → none |  |  |
| 83 | 支付方式 | 2017-09-05 13:00 → 2017-08-30 08:00 A (-6d) | 2017-09-05 17:00 → 2017-08-30 12:00 A (-6d) |  | 0% → 100% | 38d → none |  | resources 程红展 → 肖发兵 |
| 84 | 交易设置 | 2017-09-06 08:00 → 2017-08-30 13:00 A (-7d) | 2017-09-06 17:00 → 2017-08-31 12:00 A (-6d) |  | 0% → 100% | 38d → none |  | resources 程红展 → 肖发兵 |
| 85 | **会员管理** | 2017-09-08 08:00 A → 2017-08-25 13:00 A (-14d) | 2017-09-13 17:00 A → 2017-08-31 12:00 A (-13d) |  |  |  | 136 → 73 |  |
| 86 | 会员列表 | 2017-09-08 08:00 A → 2017-08-25 13:00 A (-14d) | 2017-09-08 17:00 A → 2017-08-28 12:00 A (-11d) |  |  |  |  |  |
| 87 | 会员拉黑 | 2017-09-11 08:00 A → 2017-08-28 13:00 A (-14d) | 2017-09-11 12:00 A → 2017-08-28 17:00 A (-14d) |  |  |  |  |  |
| 88 | 会员标签 | 2017-09-11 13:00 A → 2017-08-29 08:00 A (-13d) | 2017-09-12 12:00 A → 2017-08-29 17:00 A (-14d) |  |  |  |  |  |
| 89 | 积分规则 | 2017-09-12 13:00 A → 2017-08-30 08:00 A (-13d) | 2017-09-12 17:00 A → 2017-08-30 12:00 A (-13d) |  |  |  |  |  |
| 90 | 会员积分 | 2017-09-13 08:00 A → 2017-08-30 13:00 A (-14d) | 2017-09-13 17:00 A → 2017-08-31 12:00 A (-13d) |  |  |  |  |  |
| 91 | **系统管理** | 2017-10-09 13:00 A → 2017-08-31 12:00 A (-39d) | 2017-10-13 17:00 → 2017-09-05 12:00 (-38d) | 4.5d → 3d | 0% → 75% |  | 149 → none |  |
| 92 | 首页设置 | 2017-10-11 08:00 → 2017-08-31 13:00 A (-41d) | 2017-10-12 17:00 → 2017-09-04 12:00 A (-38d) |  | 0% → 100% | 2d → none | none → 90 |  |
| 93 | 资讯公告管理 | 2017-10-13 08:00 → 2017-09-04 13:00 A (-39d) | 2017-10-13 17:00 → 2017-09-05 12:00 A (-38d) |  | 0% → 100% | 2d → none |  |  |
| 94 | 角色权限管理 | 2017-10-09 13:00 A → 2017-08-31 12:00 A (-39d) | 2017-10-09 13:00 A → 2017-08-31 12:00 A (-39d) |  |  |  | 93 → 84 |  |
| 95 | 管理员管理 | 2017-10-10 13:00 A → 2017-08-31 12:00 A (-40d) | 2017-10-10 13:00 A → 2017-08-31 12:00 A (-40d) |  |  |  |  |  |
| 96 | 系统设置 | 2017-10-11 08:00 → 2017-08-31 13:00 (-41d) | 2017-10-11 17:00 → 2017-09-01 12:00 (-40d) |  |  | 4d → 51.5d |  |  |
| 97 | **财务管理** | 2017-10-16 08:00 → 2017-09-01 13:00 A (-45d) | 2017-11-02 17:00 → 2017-09-14 12:00 (-49d) | 14d → 9d | 0% → 33% | 2d → 51.5d | 91 → 96 |  |
| 98 | 明细流水 | 2017-10-18 08:00 → 2017-09-01 13:00 (-47d) | 2017-10-18 17:00 → 2017-09-04 12:00 (-44d) |  |  | 2d → 51.5d | 151 → none | resources none → 肖发兵 |
| 99 | 财务对账 | 2017-10-19 08:00 → 2017-09-04 13:00 (-45d) | 2017-10-20 17:00 → 2017-09-06 12:00 (-44d) |  |  | 2d → 51.5d |  | resources none → 肖发兵 |
| 100 | 店铺保证金 | 2017-10-23 08:00 → 2017-09-06 13:00 (-47d) | 2017-10-23 17:00 → 2017-09-07 12:00 (-46d) |  |  | 2d → 51.5d |  | resources none → 肖发兵 |
| 101 | 提现管理 | 2017-10-24 08:00 → 2017-09-07 13:00 A (-47d) | 2017-10-26 17:00 → 2017-09-12 12:00 A (-44d) |  | 0% → 100% | 2d → none |  | resources none → 肖发兵 |
| 102 | 账户余额 | 2017-10-27 08:00 → 2017-09-12 13:00 (-45d) | 2017-10-30 17:00 → 2017-09-14 12:00 (-46d) |  |  | 2d → 51.5d |  | resources none → 肖发兵 |
| 103 | **商家管理端** | 2017-08-21 08:00 → 2017-09-05 13:00 A (+15d) | 2017-08-28 12:00 → 2017-09-21 12:00 (+24d) | 5.5d → 12d | 0% → 4% |  |  |  |
| 104 | 登录 | 2017-08-21 08:00 → 2017-09-05 13:00 A (+15d) | 2017-08-21 12:00 → 2017-09-05 17:00 A (+15d) |  | 0% → 100% | 52d → none | none → 93 | resources none → 程红展 |
| 105 | 首页 | 2017-08-21 08:00 → 2017-09-06 08:00 (+16d) | 2017-08-21 17:00 → 2017-09-06 17:00 (+16d) |  |  | 51.5d → 46.5d | none → 104 | resources none → 程红展 |
| 106 | **商品管理** | 2017-08-21 08:00 → 2017-09-07 08:00 (+17d) | 2017-08-22 17:00 → 2017-09-08 17:00 (+17d) |  |  | 50d → 46.5d | none → 105 |  |
| 107 | 商品列表 | 2017-08-21 08:00 → 2017-09-07 08:00 (+17d) | 2017-08-21 12:00 → 2017-09-07 12:00 (+17d) |  |  | 50.5d → 46.5d |  | resources none → 程红展 |
| 108 | 商品发布 | 2017-08-21 13:00 → 2017-09-07 13:00 (+17d) | 2017-08-22 12:00 → 2017-09-08 12:00 (+17d) |  |  | 50.5d → 46.5d |  | resources none → 程红展 |
| 109 | 商品下架 | 2017-08-22 13:00 → 2017-09-08 13:00 (+17d) | 2017-08-22 17:00 → 2017-09-08 17:00 (+17d) |  |  | 50.5d → 46.5d |  | resources none → 程红展 |
| 110 | **交易管理** | 2017-08-21 08:00 → 2017-09-11 08:00 (+21d) | 2017-08-24 17:00 → 2017-09-14 17:00 (+21d) |  |  | 48d → 46.5d | none → 106 |  |
| 111 | 订单管理 | 2017-08-21 08:00 → 2017-09-11 08:00 (+21d) | 2017-08-22 17:00 → 2017-09-12 17:00 (+21d) |  |  | 48.5d → 46.5d |  | resources none → 程红展 |
| 112 | 退货处理 | 2017-08-23 08:00 → 2017-09-13 08:00 (+21d) | 2017-08-23 12:00 → 2017-09-13 12:00 (+21d) |  |  | 48.5d → 46.5d |  | resources none → 程红展 |
| 113 | 退款处理 | 2017-08-23 13:00 → 2017-09-13 13:00 (+21d) | 2017-08-23 17:00 → 2017-09-13 17:00 (+21d) |  |  | 48.5d → 46.5d |  | resources none → 程红展 |
| 114 | 运费模板管理 | 2017-08-24 08:00 → 2017-09-14 08:00 (+21d) | 2017-08-24 17:00 → 2017-09-14 17:00 (+21d) |  |  | 48.5d → 46.5d |  | resources none → 程红展 |
| 115 | **店铺管理** | 2017-08-21 08:00 → 2017-09-15 08:00 (+25d) | 2017-08-25 12:00 → 2017-09-20 12:00 (+26d) | 4.5d → 3.5d |  | 47.5d → 46.5d | none → 110 |  |
| 116 | 页面设置 | 2017-08-21 08:00 → 2017-09-15 08:00 (+25d) | 2017-08-21 17:00 → 2017-09-15 17:00 (+25d) |  |  | 48d → 46.5d |  | resources none → 程红展 |
| 117 | 财务管理 | 2017-08-23 08:00 → 2017-09-18 08:00 (+26d) | 2017-08-24 17:00 → 2017-09-19 17:00 (+26d) |  |  | 48d → 46.5d | 161 → 116 | resources none → 程红展 |
| 118 | 保证金管理 | 2017-08-25 08:00 → 2017-09-20 08:00 (+26d) | 2017-08-25 12:00 → 2017-09-20 12:00 (+26d) |  |  | 48d → 46.5d |  | resources none → 程红展 |
| 119 | 私信管理 | 2017-08-21 08:00 → 2017-09-20 13:00 (+30d) | 2017-08-21 17:00 → 2017-09-21 12:00 (+31d) |  |  | 51.5d → 46.5d | none → 115 | resources none → 程红展 |
| 120 | 集成测试 | 2017-11-07 08:00 → 2017-09-20 08:00 (-48d) | 2017-11-13 17:00 → 2017-10-09 17:00 (-35d) | 5d → 10d |  |  | 2 → none | constraint none → start no earlier than 2017-09-20 08:00 |
| 127 | 平台客服 | 2017-08-23 08:00 A → 2017-10-18 08:00 (+56d) | 2017-08-23 17:00 A → 2017-10-18 17:00 (+56d) |  | 100% → 0% | none → 14.5d | 9 → none | resources 穆龙飞 → none |
| 128 | **求购抢单** | 2017-09-28 13:00 → 2017-10-19 08:00 (+21d) | 2017-09-29 12:00 → 2017-10-19 17:00 (+20d) |  |  | 0d → 14.5d | 38 → 126 |  |
| 129 | 求购信息推送 | 2017-09-28 13:00 → 2017-10-19 08:00 (+21d) | 2017-09-28 17:00 → 2017-10-19 12:00 (+21d) |  |  | 0d → 14.5d |  | resources 穆龙飞 → none |
| 130 | 求购抢单 | 2017-09-29 08:00 → 2017-10-19 13:00 (+20d) | 2017-09-29 12:00 → 2017-10-19 17:00 (+20d) |  |  | 0d → 14.5d |  | resources 穆龙飞 → none |
| 131 | **服务中心** | 2017-10-31 13:00 → 2017-10-20 08:00 (-11d) | 2017-11-06 17:00 → 2017-10-26 12:00 (-11d) |  |  | 0d → 14.5d | 59 → 128 |  |
| 132 | 服务介绍 | 2017-10-31 13:00 → 2017-10-20 08:00 (-11d) | 2017-11-01 12:00 → 2017-10-20 17:00 (-12d) |  |  | 0d → 14.5d |  | resources 程红展 → none |
| 133 | 服务预约 | 2017-11-01 13:00 → 2017-10-23 08:00 (-9d) | 2017-11-06 12:00 → 2017-10-25 17:00 (-12d) |  |  | 0d → 14.5d |  | resources 程红展 → none |
| 134 | 鉴评码查询 | 2017-11-06 13:00 → 2017-10-26 08:00 (-11d) | 2017-11-06 17:00 → 2017-10-26 12:00 (-11d) |  |  | 0d → 14.5d |  | resources 程红展 → none |
| 136 | 客服管理 | 2017-09-07 08:00 → 2017-10-18 08:00 (+41d) | 2017-09-07 17:00 → 2017-10-18 17:00 (+41d) |  |  | 38d → 0d | 80 → none | resources 程红展 → none |
| 137 | **分销模板管理** | 2017-09-14 08:00 A → 2017-10-19 08:00 (+35d) | 2017-09-15 12:00 A → 2017-10-20 12:00 (+35d) |  | 100% → 0% | none → 0d | 85 → 136 |  |
| 138 | 商品分销模板管理 | 2017-09-14 08:00 A → 2017-10-19 08:00 (+35d) | 2017-09-14 12:00 A → 2017-10-19 12:00 (+35d) |  | 100% → 0% | none → 0d |  | resources 穆龙飞 → 程红展 |
| 139 | 会员分销模板管理 | 2017-09-14 13:00 A → 2017-10-19 13:00 (+35d) | 2017-09-15 12:00 A → 2017-10-20 12:00 (+35d) |  | 100% → 0% | none → 0d |  |  |
| 140 | **分销管理** | 2017-09-15 13:00 → 2017-10-20 13:00 (+35d) | 2017-09-22 12:00 → 2017-10-27 12:00 (+35d) |  |  |  |  |  |
| 141 | 分销会员管理 | 2017-09-15 13:00 → 2017-10-20 13:00 (+35d) | 2017-09-18 12:00 → 2017-10-23 12:00 (+35d) |  |  | -1.5d → 0d |  | resources 肖发兵 → 程红展 |
| 142 | 商品分销统计 | 2017-09-18 13:00 → 2017-10-23 13:00 (+35d) | 2017-09-20 12:00 → 2017-10-25 12:00 (+35d) |  |  | -1.5d → 0d |  | resources 肖发兵 → 程红展 |
| 143 | 会员分销统计 | 2017-09-20 13:00 → 2017-10-25 13:00 (+35d) | 2017-09-22 12:00 → 2017-10-27 12:00 (+35d) |  |  | -1.5d → 0d |  | resources 肖发兵 → 程红展 |
| 144 | **服务管理** | 2017-09-22 13:00 A → 2017-10-27 13:00 (+35d) | 2017-09-27 17:00 A → 2017-11-01 17:00 (+35d) |  | 100% → 0% | none → 0d |  |  |
| 145 | 服务介绍 | 2017-09-22 13:00 A → 2017-10-27 13:00 (+35d) | 2017-09-25 12:00 A → 2017-10-30 12:00 (+35d) |  | 100% → 0% | none → 0d |  | resources 程红展 → none |
| 146 | 服务预约 | 2017-09-25 13:00 A → 2017-10-30 13:00 (+35d) | 2017-09-26 12:00 A → 2017-10-31 12:00 (+35d) |  | 100% → 0% | none → 0d |  | resources 程红展 → none |
| 147 | 鉴评结果 | 2017-09-26 13:00 A → 2017-10-31 13:00 (+35d) | 2017-09-27 12:00 A → 2017-11-01 12:00 (+35d) |  | 100% → 0% | none → 0d |  | resources 程红展 → none |
| 148 | 鉴评标签 | 2017-09-27 13:00 A → 2017-11-01 13:00 (+35d) | 2017-09-27 17:00 A → 2017-11-01 17:00 (+35d) |  | 100% → 0% | none → 0d |  | resources 程红展 → none |
| 149 | 统计报表 | 2017-09-28 08:00 → 2017-11-02 08:00 (+35d) | 2017-10-10 17:00 → 2017-11-08 17:00 (+29d) |  |  | -1.5d → 0d |  | resources 肖发兵 → none |
| 151 | 财务概览 | 2017-10-16 08:00 → 2017-11-09 08:00 (+24d) | 2017-10-17 17:00 → 2017-11-10 17:00 (+24d) |  |  | 2d → 0d |  |  |
| 152 | 分销结算 | 2017-10-31 08:00 → 2017-11-13 08:00 (+13d) | 2017-11-02 17:00 → 2017-11-15 17:00 (+13d) |  |  | 2d → 0d | 102 → 151 |  |
| 154 | **营销活动管理** | 2017-08-21 08:00 → 2017-10-18 08:00 (+58d) | 2017-08-28 12:00 → 2017-10-25 12:00 (+58d) |  |  | 46.5d → 8.5d |  |  |
| 155 | 优惠劵管理 | 2017-08-21 08:00 → 2017-10-18 08:00 (+58d) | 2017-08-21 17:00 → 2017-10-18 17:00 (+58d) |  |  | 47d → 8.5d |  |  |
| 156 | 满减/满送 | 2017-08-22 08:00 → 2017-10-19 08:00 (+58d) | 2017-08-22 12:00 → 2017-10-19 12:00 (+58d) |  |  | 47d → 8.5d |  |  |
| 157 | 限时折扣 | 2017-08-22 13:00 → 2017-10-19 13:00 (+58d) | 2017-08-23 12:00 → 2017-10-20 12:00 (+58d) |  |  | 47d → 8.5d |  |  |

| ID | Task | Start | Finish | Total float | Predecessors |
| --- | --- | --- | --- | --- | --- |
| 158 | 套餐搭配 | 2017-08-23 13:00 → 2017-10-20 13:00 (+58d) | 2017-08-24 12:00 → 2017-10-23 12:00 (+60d) | 47d → 8.5d |  |
| 159 | 团购 | 2017-08-24 13:00 → 2017-10-23 13:00 (+60d) | 2017-08-28 12:00 → 2017-10-25 12:00 (+58d) | 47d → 8.5d |  |
| 161 | 增值服务管理 | 2017-08-22 13:00 → 2017-10-25 13:00 (+64d) | 2017-08-22 17:00 → 2017-10-25 17:00 (+64d) | 48d → 8.5d | 162 → none |
| 162 | 客服管理 | 2017-08-22 08:00 → 2017-10-26 08:00 (+65d) | 2017-08-22 12:00 → 2017-10-26 12:00 (+65d) | 48d → 8.5d | 116 → 161 |
| 163 | **分销管理** | 2017-08-21 08:00 → 2017-10-26 13:00 (+66d) | 2017-08-23 17:00 → 2017-10-31 12:00 (+69d) | 49d → 8.5d | none → 160 |
| 164 | 下级会员列表 | 2017-08-21 08:00 → 2017-10-26 13:00 (+66d) | 2017-08-21 17:00 → 2017-10-27 12:00 (+67d) | 49.5d → 8.5d |  |
| 165 | 会员分销统计 | 2017-08-22 08:00 → 2017-10-27 13:00 (+66d) | 2017-08-23 17:00 → 2017-10-31 12:00 (+69d) | 49.5d → 8.5d |  |
| 166 | 统计报表 | 2017-08-21 08:00 → 2017-10-31 13:00 (+71d) | 2017-08-23 17:00 → 2017-11-03 12:00 (+72d) | 49.5d → 8.5d | none → 163 |
